# planificacion

Schedule from MS Project, 2021-05-03 to 2021-12-13.

## Calendars

- Standard: Mon-Fri 08:00-12:00, 13:00-17:00; Sat-Sun off.

## Resources

| Resource |
| --- |
| Analista front-end |
| Analista back-end |
| Desarrollador senior android |
| Desarrollador iOS |
| Desarrollador experto en Bluetooth |
| Desarrollador senior java |
| Desarrollador junior android |
| Portatil |
| Tablet |
| Equipo sobremesa |
| Switch |
| Puntos de acceso a red |
| Monitor 45" |
| Teléfono IPVOID |
| Servidor |
| SAI |
| RACK |
| Sensor tipo 1 |
| Sensor tipo TATOO |
| Estanteria de fijacion |
| Regletas armario |
| Router wifi |
| Cable UTP 6 |
| Tester experto en Java |
| Tester experto en plataformas móviles |
| Consultor de tecnologia |
| Formador |
| Empresa para transporte y colocación |
| Jefe de proyecto |
| Arquitecto de software |
| Analista de sistemas |

## Schedule

| ID | WBS | Task | Duration | Start | Finish | Predecessors | Total slack | Free slack | Constraint | Resources | Work |
| --- | --- | --- | --- | --- | --- | --- | --- | --- | --- | --- | --- |
| 1 | 1 | **Análisis** | 14d | 2021-05-03 | 2021-05-20 |  | 0d |  |  |  | 208h |
| 2 | 1.1 | Valoración de la infraestructura | 4d | 2021-05-03 | 2021-05-06 |  | 0d |  |  | Consultor de tecnologia; Analista de sistemas; Jefe de proyecto; Arquitecto de software | 128h |
| 3 | 1.2 | Estudio de mercado (hardware y software) | 5d | 2021-05-07 | 2021-05-13 | 2 | 0d |  |  | Consultor de tecnologia | 40h |
| 4 | 1.3 | Evaluación del personal | 5d | 2021-05-14 | 2021-05-20 | 3 | 0d |  | finish no earlier than 2021-05-17 | Analista de sistemas | 40h |
| 5 | 2 | **Puesta en marcha** | 11d | 2021-05-21 | 2021-06-04 |  | 0d |  |  |  | 160h |
| 6 | 2.1 | Contratación de personal | 5d | 2021-05-21 | 2021-05-27 | 4 | 0d |  |  | Jefe de proyecto | 40h |
| 7 | 2.2 | Compra del hardware y software | 6d | 2021-05-28 | 2021-06-04 | 6 | 0d |  |  | Analista de sistemas; Empresa para transporte y colocación; Jefe de proyecto | 120h |
| 8 | 3 | **Desarrollo** | 92d | 2021-06-07 | 2021-10-12 |  | 0d |  |  |  | 4776h |
| 9 | 3.1 | **Consulta de registro de historia** | 50d | 2021-06-07 | 2021-08-13 |  | 0d |  |  |  | 1056h |
| 10 | 3.1.1 | Análisis | 13d | 2021-06-07 | 2021-06-23 | 7 | 0d |  |  | Analista back-end; Analista front-end; Analista de sistemas | 312h |
| 11 | 3.1.2 | Desarrollo | 28d | 2021-06-24 | 2021-08-02 | 10 | 32d | 0d |  | Desarrollador iOS; Desarrollador junior android; Desarrollador senior android | 672h |
| 12 | 3.1.3 | Pruebas | 9d | 2021-08-03 | 2021-08-13 | 11 | 32d | 0d |  | Tester experto en plataformas móviles | 72h |
| 13 | 3.2 | **Gestión de usuarios** | 36d | 2021-06-24 | 2021-08-12 |  | 0d |  |  |  | 416h |
| 14 | 3.2.1 | Análisis | 9d | 2021-06-24 | 2021-07-06 | 10 | 0d |  |  | Analista back-end; Analista front-end; Analista de sistemas | 216h |
| 15 | 3.2.2 | Desarrollo | 18d | 2021-07-07 | 2021-07-30 | 14 | 12d | 0d |  | Desarrollador senior java | 144h |
| 16 | 3.2.3 | Pruebas | 7d | 2021-08-02 | 2021-08-12 | 15 | 87d |  |  | Tester experto en Java | 56h |
| 17 | 3.3 | **Bluetooth** | 70d | 2021-07-07 | 2021-10-12 |  | 0d |  |  |  | 1272h |
| 18 | 3.3.1 | Análisis | 15d | 2021-07-07 | 2021-07-27 | 14 | 0d |  |  | Analista back-end; Analista front-end; Analista de sistemas; Consultor de tecnologia; Desarrollador experto en Bluetooth | 552h |
| 19 | 3.3.2 | Desarrollo | 30d | 2021-08-02 | 2021-09-10 | 18, 15 | 12d | 0d |  | Desarrollador senior java; Desarrollador experto en Bluetooth | 480h |
| 20 | 3.3.3 | Pruebas | 15d | 2021-09-22 | 2021-10-12 | 19 | 43d | 0d |  | Desarrollador experto en Bluetooth; Tester experto en Java; Tester experto en plataformas móviles | 240h |
| 21 | 3.4 | **Gestión del transporte** | 53d | 2021-07-28 | 2021-10-08 |  | 0d |  |  |  | 480h |
| 22 | 3.4.1 | Análisis | 4d | 2021-07-28 | 2021-08-02 | 18 | 0d |  |  | Analista back-end; Analista front-end; Analista de sistemas | 96h |
| 23 | 3.4.2 | Desarrollo | 12d | 2021-08-03 | 2021-08-18 | 22 | 29d | 0d |  | Desarrollador iOS; Desarrollador junior android; Desarrollador senior android | 288h |
| 24 | 3.4.3 | Pruebas | 6d | 2021-08-19 | 2021-10-08 | 23 | 46d |  |  | Desarrollador iOS; Desarrollador junior android; Tester experto en plataformas móviles | 96h |

| ID | WBS | Task | Duration | Start | Finish | Predecessors | Total slack | Free slack | Constraint | Resources | Work |
| --- | --- | --- | --- | --- | --- | --- | --- | --- | --- | --- | --- |
| 25 | 3.5 | **Gestión de sensores** | 15d | 2021-08-03 | 2021-08-23 |  | 0d |  |  |  | 176h |
| 26 | 3.5.1 | Análisis | 4d | 2021-08-03 | 2021-08-06 | 22 | 0d |  |  | Analista back-end; Analista front-end; Analista de sistemas | 96h |
| 27 | 3.5.2 | Desarrollo | 8d | 2021-08-09 | 2021-08-18 | 26 | 2d | 1d | start no earlier than 2021-08-02 | Desarrollador senior java | 64h |
| 28 | 3.5.3 | Pruebas | 2d | 2021-08-20 | 2021-08-23 | 27 | 79d |  | start no earlier than 2021-08-20 | Tester experto en Java | 16h |
| 29 | 3.6 | **Dashboard** | 32d | 2021-08-09 | 2021-09-21 |  | 0d |  |  |  | 688h |
| 30 | 3.6.1 | Análisis | 10d | 2021-08-09 | 2021-08-20 | 26 | 0d |  |  | Analista back-end; Analista front-end; Analista de sistemas | 240h |
| 31 | 3.6.2 | Desarrollo | 12d | 2021-08-20 | 2021-09-07 | 30, 27 | 0d |  |  | Desarrollador iOS; Desarrollador junior android; Desarrollador senior android; Desarrollador senior java | 288h |
| 32 | 3.6.3 | Pruebas | 10d | 2021-09-08 | 2021-09-21 | 31 | 59d |  |  | Tester experto en plataformas móviles; Tester experto en Java | 160h |
| 33 | 3.7 | **Integración con sistemas centrales** | 27d | 2021-08-23 | 2021-09-28 |  | 0d |  |  |  | 688h |
| 34 | 3.7.1 | Análisis | 7d | 2021-08-23 | 2021-08-31 | 30 | 5d |  |  | Analista back-end; Analista front-end; Analista de sistemas | 168h |
| 35 | 3.7.2 | Desarrollo | 11d | 2021-09-08 | 2021-09-22 | 34, 31 | 0d |  |  | Desarrollador iOS; Desarrollador junior android; Desarrollador senior android; Desarrollador senior java; Desarrollador experto en Bluetooth | 392h |
| 36 | 3.7.3 | Pruebas | 4d | 2021-09-23 | 2021-09-28 | 35 | 0d |  |  | Desarrollador iOS; Desarrollador junior android; Desarrollador senior android; Desarrollador senior java | 128h |
| 37 | 4 | Pruebas | 10d | 2021-09-29 | 2021-10-12 | 15, 19, 23, 12, 31, 36 | 0d |  |  |  |  |
| 38 | 5 | Instalacion infraestructura | 90d | 2021-06-07 | 2021-10-08 | 7 | 2d | 0d | start no earlier than 2021-05-14 | Portatil [9400%]; Equipo sobremesa [1800%]; Tablet [8700%]; Router wifi [800%]; Switch [700%]; Monitor 45" [900%]; Teléfono IPVOID [2800%]; Puntos de acceso a red [3600%]; RACK; Regletas armario [300%]; SAI; Sensor tipo 1 [200000%]; Sensor tipo TATOO [50000%]; Servidor; Estanteria de fijacion [500%]; Cable UTP 6 [108000%]; Empresa para transporte y colocación | 720h |
| 39 | 6 | Implementación | 7d | 2021-10-13 | 2021-10-21 | 37, 38 | 0d |  |  | Desarrollador junior android; Desarrollador senior android; Desarrollador senior java | 168h |
| 40 | 7 | Despliegue | 7d | 2021-10-22 | 2021-11-01 | 37, 38, 39 | 0d |  |  | Desarrollador junior android; Desarrollador senior android; Desarrollador senior java; Desarrollador experto en Bluetooth | 224h |
| 41 | 8 | Realización Acta de Aceptación | 1d | 2021-11-02 | 2021-11-02 | 40 | 28d | 0d |  | Jefe de proyecto | 8h |
| 42 | 9 | Formación del personal | 30d | 2021-11-02 | 2021-12-13 | 40 | 0d |  |  | Formador | 240h |
| 43 | 10 | **Reuniones de seguimiento** | 124d | 2021-05-14 | 2021-11-03 |  | 28d |  |  |  | 192h |
| 44 | 10.1 | **Reunion de seguimiento 1** | 1d | 2021-05-14 | 2021-05-14 |  | 151d |  |  |  | 16h |
| 45 | 10.1.1 | Elaborar acta de reunion | 1d | 2021-05-14 | 2021-05-14 | 3 | 151d |  |  | Consultor de tecnologia; Jefe de proyecto | 16h |
| 46 | 10.2 | **Reunion de seguimiento 2** | 1d | 2021-06-07 | 2021-06-07 |  | 135d |  |  |  | 16h |
| 47 | 10.2.1 | Elaborar acta de reunion | 1d | 2021-06-07 | 2021-06-07 | 7 | 135d |  | start no earlier than 2021-06-03 | Consultor de tecnologia; Jefe de proyecto | 16h |
| 48 | 10.3 | **Reunion de seguimiento 3** | 1d | 2021-06-24 | 2021-06-24 |  | 122d |  |  |  | 16h |
| 49 | 10.3.1 | Elaborar acta de reunion | 1d | 2021-06-24 | 2021-06-24 | 10 | 122d |  |  | Consultor de tecnologia; Jefe de proyecto | 16h |

| ID | WBS | Task | Duration | Start | Finish | Predecessors | Total slack | Resources | Work |
| --- | --- | --- | --- | --- | --- | --- | --- | --- | --- |
| 50 | 10.4 | **Reunion de seguimiento 4** | 1d | 2021-07-28 | 2021-07-28 |  | 98d |  | 16h |
| 51 | 10.4.1 | Elaborar acta de reunion | 1d | 2021-07-28 | 2021-07-28 | 18 | 98d | Consultor de tecnologia; Jefe de proyecto | 16h |
| 52 | 10.5 | **Reunion de seguimiento 5** | 1d | 2021-08-09 | 2021-08-09 |  | 90d |  | 16h |
| 53 | 10.5.1 | Elaborar acta de reunion | 1d | 2021-08-09 | 2021-08-09 | 26 | 90d | Consultor de tecnologia; Jefe de proyecto | 16h |
| 54 | 10.6 | **Reunion de seguimiento 6** | 1d | 2021-08-16 | 2021-08-16 |  | 85d |  | 16h |
| 55 | 10.6.1 | Elaborar acta de reunion | 1d | 2021-08-16 | 2021-08-16 | 12 | 85d | Consultor de tecnologia; Jefe de proyecto | 16h |
| 56 | 10.7 | **Reunion de seguimiento 7** | 1d | 2021-08-24 | 2021-08-24 |  | 79d |  | 16h |
| 57 | 10.7.1 | Elaborar acta de reunion | 1d | 2021-08-24 | 2021-08-24 | 25 | 79d | Consultor de tecnologia; Jefe de proyecto | 16h |
| 58 | 10.8 | **Reunion de seguimiento 8** | 1d | 2021-09-08 | 2021-09-08 |  | 68d |  | 16h |
| 59 | 10.8.1 | Elaborar acta de reunion | 1d | 2021-09-08 | 2021-09-08 | 31 | 68d | Consultor de tecnologia; Jefe de proyecto | 16h |
| 60 | 10.9 | **Reunion de seguimiento 9** | 1d | 2021-09-23 | 2021-09-23 |  | 57d |  | 16h |
| 61 | 10.9.1 | Elaborar acta de reunion | 1d | 2021-09-23 | 2021-09-23 | 35 | 57d | Consultor de tecnologia; Jefe de proyecto | 16h |
| 62 | 10.10 | **Reunion de seguimiento 10** | 1d | 2021-10-11 | 2021-10-11 |  | 45d |  | 16h |
| 63 | 10.10.1 | Elaborar acta de reunion | 1d | 2021-10-11 | 2021-10-11 | 38 | 45d | Consultor de tecnologia; Jefe de proyecto | 16h |
| 64 | 10.11 | **Reunion de seguimiento 11** | 1d | 2021-10-22 | 2021-10-22 |  | 36d |  | 16h |
| 65 | 10.11.1 | Elaborar acta de reunion | 1d | 2021-10-22 | 2021-10-22 | 39 | 36d | Consultor de tecnologia; Jefe de proyecto | 16h |
| 66 | 10.12 | **Reunion de seguimiento 12** | 1d | 2021-11-03 | 2021-11-03 |  | 28d |  | 16h |
| 67 | 10.12.1 | Elaborar acta de reunion | 1d | 2021-11-03 | 2021-11-03 | 41 | 28d | Consultor de tecnologia; Jefe de proyecto | 16h |
